# microsoft-project-how-to-create-your-project-plan-in-ms-project

Schedule from MS Project, 2016-10-06 to 2016-12-23, costs in ₫.

## Calendars

- Standard: Mon-Fri 08:00-12:00, 13:00-17:00; Sat-Sun off. Exceptions (off unless hours are given): 2016-10-13 (Columbus Day), 2016-11-11 (Veterans Day), 2016-11-27 (Thanksgiving Holiday).

## Resources

| Resource | Group | Rate |
| --- | --- | --- |
| John | Analysis | 60 |
| Nelly | Analysis | 50 |
| David | Architect | 75 |
| Joe | Developers | 70 |
| Nick | Developers | 60 |
| Justin | Developers | 60 |
| Lisa | Developers | 40 |
| Richard | Testing | 50 |

## Schedule

| ID | WBS | Task | Duration | Start | Finish | Predecessors | Baseline start | Baseline finish | Baseline duration | Total slack | Free slack | Constraint | Resources | Work | Cost | Baseline cost |
| --- | --- | --- | --- | --- | --- | --- | --- | --- | --- | --- | --- | --- | --- | --- | --- | --- |
| 1 | 1 | **Website Development** | 55d? | 2016-10-06 | 2016-12-23 |  | 2016-10-06 | 2016-12-23 | 55d? | 0d |  |  |  | 1464h | 89,800 | 89,800 |
| 2 | 1.1 | **ANALYSIS** | 24d? | 2016-10-06 | 2016-11-09 |  | 2016-10-06 | 2016-11-09 | 24d? | 0d |  |  |  | 328h | 19,360 | 19,360 |
| 3 | 1.1.1 | Main Page | 10d | 2016-10-06 | 2016-10-20 |  | 2016-10-06 | 2016-10-20 | 10d | 0d |  |  | John [50%] | 40h | 2,720 | 2,720 |
| 4 | 1.1.2 | Content Page #1 | 3d? | 2016-10-06 | 2016-10-10 |  | 2016-10-06 | 2016-10-10 | 3d? | 0d |  |  | Nelly | 24h | 1,200 | 1,200 |
| 5 | 1.1.3 | Content Page #2 | 2d? | 2016-10-11 | 2016-10-12 | 4 | 2016-10-11 | 2016-10-12 | 2d? | 0d |  |  | Nelly | 16h | 800 | 800 |
| 6 | 1.1.4 | Content Page #3 | 2d? | 2016-10-21 | 2016-10-24 | 3 | 2016-10-21 | 2016-10-24 | 2d? | 0d |  |  | John | 16h | 1,120 | 1,120 |
| 7 | 1.1.5 | Author Page | 2d? | 2016-10-14 | 2016-10-17 | 5 | 2016-10-14 | 2016-10-17 | 2d? | 0d |  |  | Nelly | 16h | 800 | 800 |
| 8 | 1.1.6 | Contact Page | 2d? | 2016-10-25 | 2016-10-26 | 6 | 2016-10-25 | 2016-10-26 | 2d? | 0d |  |  | John | 16h | 1,120 | 1,120 |
| 9 | 1.1.7 | Search Page | 7d? | 2016-10-18 | 2016-10-27 | 7 | 2016-10-18 | 2016-10-27 | 7d? | 2d | 0d |  | Nelly | 56h | 2,800 | 2,800 |
| 10 | 1.1.8 | Order Page | 6d? | 2016-10-27 | 2016-11-03 | 8 | 2016-10-27 | 2016-11-03 | 6d? | 0d |  |  | John | 48h | 3,360 | 3,360 |
| 11 | 1.1.9 | Tracking Page | 4d? | 2016-11-04 | 2016-11-09 | 10 | 2016-11-04 | 2016-11-09 | 4d? | 0d |  |  | John | 32h | 2,240 | 2,240 |
| 12 | 1.1.10 | Admin Page | 8d? | 2016-10-28 | 2016-11-08 | 9 | 2016-10-28 | 2016-11-08 | 8d? | 5d |  |  | Nelly | 64h | 3,200 | 3,200 |
| 13 | 1.2 | **DESIGN** | 26d? | 2016-10-18 | 2016-11-23 |  | 2016-10-18 | 2016-11-23 | 26d? | 0d |  |  |  | 200h | 15,000 | 15,000 |
| 14 | 1.2.1 | Main Page | 4d | 2016-10-21 | 2016-10-26 | 3, 15 | 2016-10-21 | 2016-10-26 | 4d | 0d |  |  | David | 32h | 2,400 | 2,400 |
| 15 | 1.2.2 | Content Page #1 | 2d | 2016-10-19 | 2016-10-20 | 4, 18 | 2016-10-19 | 2016-10-20 | 2d | 0d |  |  | David | 16h | 1,200 | 1,200 |
| 16 | 1.2.3 | Content Page #2 | 1d? | 2016-10-27 | 2016-10-27 | 5, 14 | 2016-10-27 | 2016-10-27 | 1d? | 0d |  |  | David | 8h | 600 | 600 |
| 17 | 1.2.4 | Content Page #3 | 1d? | 2016-10-28 | 2016-10-28 | 6, 14, 16 | 2016-10-28 | 2016-10-28 | 1d? | 0d |  |  | David | 8h | 600 | 600 |
| 18 | 1.2.5 | Author Page | 1d? | 2016-10-18 | 2016-10-18 | 7 | 2016-10-18 | 2016-10-18 | 1d? | 0d |  |  | David | 8h | 600 | 600 |
| 19 | 1.2.6 | Contact Page | 1d? | 2016-10-31 | 2016-10-31 | 8, 17 | 2016-10-31 | 2016-10-31 | 1d? | 0d |  |  | David | 8h | 600 | 600 |
| 20 | 1.2.7 | Search Page | 4d | 2016-11-01 | 2016-11-07 | 9, 19 | 2016-11-01 | 2016-11-07 | 4d | 0d |  |  | David | 32h | 2,400 | 2,400 |
| 21 | 1.2.8 | Order Page | 3d | 2016-11-08 | 2016-11-10 | 10, 20 | 2016-11-08 | 2016-11-10 | 3d | 0d |  |  | David | 24h | 1,800 | 1,800 |
| 22 | 1.2.9 | Tracking Page | 3d | 2016-11-14 | 2016-11-16 | 11, 21 | 2016-11-14 | 2016-11-16 | 3d | 0d |  |  | David | 24h | 1,800 | 1,800 |
| 23 | 1.2.10 | Admin Page | 5d | 2016-11-17 | 2016-11-23 | 12, 22 | 2016-11-17 | 2016-11-23 | 5d | 0d |  |  | David | 40h | 3,000 | 3,000 |
| 24 | 1.3 | **DEVELOPMENT** | 38d? | 2016-10-25 | 2016-12-16 |  | 2016-10-25 | 2016-12-16 | 38d? | 4d | 0d |  |  | 632h | 38,800 | 38,800 |
| 25 | 1.3.1 | Main Page | 12d | 2016-11-02 | 2016-11-18 | 14 | 2016-11-02 | 2016-11-18 | 12d | 22d | 0d | start no earlier than 2016-11-02 | Joe | 96h | 6,720 | 6,720 |
| 26 | 1.3.2 | Content Page #1 | 6d | 2016-10-25 | 2016-11-01 | 15 | 2016-10-25 | 2016-11-01 | 6d | 30.5d | 0d | start no earlier than 2016-10-25 | Nick | 48h | 2,880 | 2,880 |
| 27 | 1.3.3 | Content Page #2 | 4d? | 2016-11-14 | 2016-11-17 | 16 | 2016-11-14 | 2016-11-17 | 4d? | 8.5d | 0d | start no earlier than 2016-11-12 | Justin | 32h | 1,920 | 1,920 |
| 28 | 1.3.4 | Content Page #3 | 4d? | 2016-11-16 | 2016-11-23 | 17 | 2016-11-16 | 2016-11-23 | 4d? | 19d | 2d | start no earlier than 2016-11-16 | Lisa | 32h | 1,280 | 1,280 |
| 29 | 1.3.5 | Author Page | 3d? | 2016-11-02 | 2016-11-04 | 18, 26 | 2016-11-02 | 2016-11-04 | 3d? | 32d | 0d |  | Nick | 24h | 1,440 | 1,440 |
| 30 | 1.3.6 | Contact Page | 3d? | 2016-12-07 | 2016-12-09 | 19, 27, 49 | 2016-12-07 | 2016-12-09 | 3d? | 9d | 3.5d |  | Justin | 24h | 1,440 | 1,440 |
| 31 | 1.3.7 | Search Page | 14d | 2016-11-08 | 2016-11-29 | 20 | 2016-11-08 | 2016-11-29 | 14d | 4.5d | 0d |  | Nick | 112h | 6,720 | 6,720 |
| 32 | 1.3.8 | Order Page | 11d | 2016-11-18 | 2016-12-05 | 21, 27 | 2016-11-18 | 2016-12-05 | 11d | 7.5d | 0d |  | Justin | 88h | 5,280 | 5,280 |
| 33 | 1.3.9 | Tracking Page | 5d | 2016-12-05 | 2016-12-13 | 22 | 2016-12-05 | 2016-12-13 | 5d | 2.5d | 0d | start no earlier than 2016-12-01 | Lisa | 40h | 1,600 | 1,600 |
| 34 | 1.3.10 | Admin Page | 17d | 2016-11-24 | 2016-12-16 | 23 | 2016-11-24 | 2016-12-16 | 17d | 0d |  |  | Joe | 136h | 9,520 | 9,520 |

| ID | WBS | Task | Type | Duration | Start | Finish | Predecessors | Baseline start | Baseline finish | Baseline duration | Total slack | Free slack | Constraint | Resources | Work | Cost | Baseline cost |
| --- | --- | --- | --- | --- | --- | --- | --- | --- | --- | --- | --- | --- | --- | --- | --- | --- | --- |
| 35 | 1.4 | **TESTING** |  | 35d? | 2016-11-04 | 2016-12-23 |  | 2016-11-04 | 2016-12-23 | 35d? | 0d |  |  |  | 176h | 8,800 | 8,800 |
| 36 | 1.4.1 | Main Page |  | 3d | 2016-11-21 | 2016-11-23 | 25 | 2016-11-21 | 2016-11-23 | 3d | 22d | 0d |  | Richard | 24h | 1,200 | 1,200 |
| 37 | 1.4.2 | Content Page #1 |  | 1.5d | 2016-11-04 | 2016-11-07 | 26 | 2016-11-04 | 2016-11-07 | 1.5d | 28.5d | 0.5d | start no earlier than 2016-11-04 | Richard | 12h | 600 | 600 |
| 38 | 1.4.3 | Content Page #2 |  | 1d? | 2016-11-18 | 2016-11-18 | 27, 37 | 2016-11-18 | 2016-11-18 | 1d? | 21d | 12d |  | Richard | 8h | 400 | 400 |
| 39 | 1.4.4 | Content Page #3 |  | 1d? | 2016-11-28 | 2016-11-28 | 28 | 2016-11-28 | 2016-11-28 | 1d? | 17d | 0d | start no earlier than 2016-11-26 | Richard | 8h | 400 | 400 |
| 40 | 1.4.5 | Author Page |  | 1d? | 2016-11-29 | 2016-11-29 | 29, 39 | 2016-11-29 | 2016-11-29 | 1d? | 17d | 1d | start no earlier than 2016-11-17 | Richard | 8h | 400 | 400 |
| 41 | 1.4.6 | Contact Page |  | 1d? | 2016-12-15 | 2016-12-16 | 30, 40, 44 | 2016-12-15 | 2016-12-16 | 1d? | 5.5d | 0d |  | Richard | 8h | 400 | 400 |
| 42 | 1.4.7 | Search Page |  | 4d | 2016-11-30 | 2016-12-05 | 31 | 2016-11-30 | 2016-12-05 | 4d | 4.5d | 0d |  | Richard | 32h | 1,600 | 1,600 |
| 43 | 1.4.8 | Order Page |  | 3d | 2016-12-06 | 2016-12-13 | 32, 42 | 2016-12-06 | 2016-12-13 | 3d | 4.5d | 0d |  | Richard | 24h | 1,200 | 1,200 |
| 44 | 1.4.9 | Tracking Page |  | 1.5d | 2016-12-14 | 2016-12-15 | 33, 43 | 2016-12-14 | 2016-12-15 | 1.5d | 4.5d | 0d |  | Richard | 12h | 600 | 600 |
| 45 | 1.4.10 | Admin Page |  | 5d | 2016-12-19 | 2016-12-23 | 34 | 2016-12-19 | 2016-12-23 | 5d | 0d |  |  | Richard | 40h | 2,000 | 2,000 |
| 46 | 1.5 | **BUGFIX** |  | 34d? | 2016-11-07 | 2016-12-23 |  | 2016-11-07 | 2016-12-23 | 34d? | 0d |  |  |  | 128h | 7,840 | 7,840 |
| 47 | 1.5.1 | Main Page |  | 2d? | 2016-11-22 | 2016-11-23 | 36FF | 2016-11-22 | 2016-11-23 | 2d? | 22d |  |  | Joe | 16h | 1,120 | 1,120 |
| 48 | 1.5.2 | Content Page #1 |  | 1d? | 2016-11-07 | 2016-11-07 | 37FF, 29 | 2016-11-07 | 2016-11-07 | 1d? | 33d |  |  | Nick | 8h | 480 | 480 |
| 49 | 1.5.3 | Content Page #2 |  | 1d? | 2016-12-06 | 2016-12-06 | 38FF, 32 | 2016-12-06 | 2016-12-06 | 1d? | 9d | 0d |  | Justin | 8h | 480 | 480 |
| 50 | 1.5.4 | Content Page #3 |  | 1d? | 2016-11-28 | 2016-11-28 | 39FF, 28 | 2016-11-28 | 2016-11-28 | 1d? | 17d |  | start no earlier than 2016-11-16 | Lisa | 8h | 320 | 320 |
| 51 | 1.5.5 | Author Page |  | 1d? | 2016-11-30 | 2016-11-30 | 40FF, 31 | 2016-11-30 | 2016-11-30 | 1d? | 17d |  |  | Nick [50%] | 4h | 240 | 240 |
| 52 | 1.5.6 | Contact Page |  | 1d? | 2016-12-15 | 2016-12-16 | 41FF | 2016-12-15 | 2016-12-16 | 1d? | 5.5d |  |  | Justin [50%] | 4h | 240 | 240 |
| 53 | 1.5.7 | Search Page |  | 3d? | 2016-12-01 | 2016-12-05 | 42FF | 2016-12-01 | 2016-12-05 | 3d? | 14d |  |  | Nick | 24h | 1,440 | 1,440 |
| 54 | 1.5.8 | Order Page |  | 2d? | 2016-12-12 | 2016-12-13 | 43FF | 2016-12-12 | 2016-12-13 | 2d? | 8d |  |  | Justin | 16h | 960 | 960 |
| 55 | 1.5.9 | Tracking Page |  | 1d? | 2016-12-14 | 2016-12-15 | 44FF | 2016-12-14 | 2016-12-15 | 1d? | 4.5d |  |  | Lisa | 8h | 320 | 320 |
| 56 | 1.5.10 | Admin Page |  | 4d? | 2016-12-20 | 2016-12-23 | 45FF | 2016-12-20 | 2016-12-23 | 4d? | 0d |  |  | Joe | 32h | 2,240 | 2,240 |
| 57 | 1.6 | **MILESTONE** |  | 31d | 2016-11-09 | 2016-12-23 |  | 2016-11-09 | 2016-12-23 | 31d | 0d |  |  |  |  |  |  |
| 58 | 1.6.1 | Finish of Analysis Phase | milestone | 0d | 2016-11-09 | 2016-11-09 | 2 | 2016-11-09 | 2016-11-09 |  | 29d |  |  |  |  |  |  |
| 59 | 1.6.2 | Finish of Design Phase | milestone | 0d | 2016-11-23 | 2016-11-23 | 13 | 2016-11-23 | 2016-11-23 |  | 22d |  |  |  |  |  |  |
| 60 | 1.6.3 | Finish of Development Phase | milestone | 0d | 2016-12-16 | 2016-12-16 | 24 | 2016-12-16 | 2016-12-16 |  | 5d |  |  |  |  |  |  |
| 61 | 1.6.4 | Finish of Testing Phase | milestone | 0d | 2016-12-23 | 2016-12-23 | 35 | 2016-12-23 | 2016-12-23 |  | 0d |  |  |  |  |  |  |
| 62 | 1.6.5 | Finish of BugFix Phase | milestone | 0d | 2016-12-23 | 2016-12-23 | 46 | 2016-12-23 | 2016-12-23 |  | 0d |  |  |  |  |  |  |
